# RBE Hands-on Materials Update Policy

Schedule from GanttProject, 2021-05-10 to 2023-04-13.
WPI Robotics Department
* Purpose: / This represents the official procedure for changing materials used in hands-on activities with students in the Robotics Department at WPI. / * Initial Conditions: / The WPI Annual Planning and Budget Process (APBP) determines budget allocations to the all of WPI. / Budgets are allocated for one year and one year only. / Budget can not be carried over year to year. / Unspent budget is returned to WPI and less is allocated the following year. / Operational expenses generally are continued so long as estimates match expenses. / Capital expenses are highly competitive and often left unfunded. / * Scheduled Updates Plan: / As program head of robotics, David Cyganski put together a plan for continuing support for the Robotics hands-on activities materials. In his decades of experience with the WPI APBP he realized that if capital expenses are refreshed on a schedule then continuing support from WPI operational budget can be used. He worked up the 11 year cycle of lab updates as a result. / The cycle is as follows: / Year one: Update hardware for 3001(Five year operation, 10 class offerings) / Year two: Update hardware for 3002(Five year operation, 10 class offerings) / Year three: Update hardware for 2002(Five year operation, 10 class offerings) / Year four: Update hardware for 2001(Five year operation, 10 class offerings) / Year five: Update hardware for 1001(Five year operation, 20 class offerings, last in the macro cycle for labs) / Year six: Update hardware for 3001(Six year operation, 12 class offerings) / Year seven: Update hardware for 3002(Six year operation, 12 class offerings) / Year eight: Update hardware for 2002(Six year operation, 12 class offerings) / Year nine: Update hardware for 2001(Six year operation, 12 class offerings) / Year ten: Update hardware for 1001(Six year operation, 24 class offerings) / Year eleven: Update bench-top test equipment (Eleven year operation) / The goal is to go in reverse order so that the new topics at the top that need back-filling of new objectives in lower classes can be added to those classes in turn. The cycle of labs turns over twice, then the bench top equipment is updated. / Material and tools retired from previous cycles of the hands-on system can be made available to students for MQP work, can be allocated to graduate labs for use in research, or allocated for use in graduate classes adding hardware component to graduate studies.
Holidays every year on 01-01, 07-04, 11-11, 12-25

## Calendars

- Project calendar: Mon-Fri working; Sat-Sun off.

## Resources

| Resource | Group |
| --- | --- |
| Lab Staff Engineers | Lab Staff R/D Engineering team |
| UPC | Teaching Professor |
| All Faculty | Teaching Professor |
| Professors of Class Being Updated | Teaching Professor |
| Previous Years Professor | Teaching Professor |
| Next Years Professor | Teaching Professor |

## Schedule

| ID | Task | Type | Duration | Start | Finish | Predecessors | Resources |
| --- | --- | --- | --- | --- | --- | --- | --- |
| 1 | Investigation phase |  | 17d | 2021-05-10 | 2021-06-01 |  | Lab Staff Engineers [25%]; UPC [50%]; Professors of Class Being Updated [25%] |
| 2 | Propose new changes | milestone | 0d | 2021-06-02 | 2021-06-02 | 1 | UPC |
| 3 | Open Discussion of changes Period |  | 60d | 2021-06-02 | 2021-08-24 | 2 | All Faculty |
| 4 | Changes Finalized Into Requirements - Passed to R/D | milestone | 0d | 2021-08-25 | 2021-08-25 | 3 | Lab Staff Engineers; UPC |
| 5 | Convert Requirements to Specifications |  | 41d | 2021-08-25 | 2021-10-20 | 4, 19 | Lab Staff Engineers [50%] |
| 6 | Finalize Parts Selection for Development and Testing | milestone | 0d | 2021-10-21 | 2021-10-21 | 5 | Lab Staff Engineers; UPC |
| 7 | Development Phase |  | 40d | 2021-10-21 | 2021-12-16 | 6, 19 | Lab Staff Engineers [50%] |
| 8 | Lab , Homework, Documentation Documents Updated |  | 48d | 2021-10-21 | 2021-12-28 | 6 | Professors of Class Being Updated [50%] |
| 9 | Update all of the lecture slides and record videos |  | 100d | 2021-12-29 | 2022-05-17 | 8 | Professors of Class Being Updated [50%] |
| 10 | Custom Electronics Development Period |  | 100d | 2021-12-17 | 2022-05-05 | 7 | Lab Staff Engineers [50%] |
| 11 | E1 Test Class Run With Paid Student Workers |  | 34d | 2022-05-16 | 2022-06-30 | 8, 10 | Lab Staff Engineers [50%]; Professors of Class Being Updated [50%] |
| 12 | E2 Feedback from Test Class Incorporated and Re-Run |  | 25d | 2022-07-11 | 2022-08-12 | 11 | Lab Staff Engineers [50%]; Professors of Class Being Updated [25%] |
| 13 | Milestone A term Start | milestone | 0d | 2022-08-15 | 2022-08-15 | 8, 9, 12, 22 |  |
| 14 | A term Test ISP For Credit |  | 37d | 2022-08-15 | 2022-10-04 | 13 | Lab Staff Engineers [25%]; Professors of Class Being Updated [50%] |
| 15 | B term Feedback From Experimental Class Incorporated |  | 38d | 2022-10-25 | 2022-12-16 | 14 | Lab Staff Engineers [50%]; Professors of Class Being Updated [50%] |
| 16 | Finalize Course Material | milestone | 0d | 2022-12-19 | 2022-12-19 | 15 | UPC |
| 17 | Production TIme |  | 60d | 2022-08-15 | 2022-11-04 | 13 | Lab Staff Engineers [25%] |
| 18 | Second Semester Roll Out |  | 84d | 2022-12-19 | 2023-04-13 | 16, 17 | Professors of Class Being Updated [25%]; Professors of Class Being Updated [50%] |
| 19 | Pervious Years Budget Availible to Lab Staff | milestone | 0d | 2021-07-01 | 2021-07-01 |  |  |
| 20 | Budget Plan Due APBP For Next Year | milestone | 0d | 2022-03-15 | 2022-03-15 | 6FF |  |
| 21 | No Spending Period |  | 22d | 2022-06-01 | 2022-06-30 |  |  |
| 22 | Budget Availible to Lab Staff | milestone | 0d | 2022-07-01 | 2022-07-01 | 21 |  |
| 23 | Previous years Test ISP For Credit |  | 37d | 2021-08-25 | 2021-10-14 |  | Lab Staff Engineers [25%]; Previous Years Professor [50%] |
| 24 | Previous Years Feedback From Experimental Class Incorporated |  | 44d | 2021-10-15 | 2021-12-16 | 23 | Lab Staff Engineers [50%]; Previous Years Professor [50%] |
| 25 | Previous Years Update Rollout |  | 86d | 2021-12-17 | 2022-04-15 | 24, 26 | Lab Staff Engineers [25%]; Previous Years Professor [50%] |
| 26 | Previous Years Production TIme |  | 60d | 2021-08-25 | 2021-11-17 | 19, 23SS | Lab Staff Engineers [25%] |
| 27 | Next Year Investigation phase |  | 18d | 2022-04-18 | 2022-05-11 | 25 | Lab Staff Engineers [50%]; UPC [50%]; Next Years Professor [25%] |
| 28 | Next Year Propose new changes | milestone | 0d | 2022-05-12 | 2022-05-12 | 27 | UPC |
| 29 | Next Year Open Discussion of changes Period |  | 60d | 2022-05-12 | 2022-08-04 | 28 | All Faculty |
| 30 | Next Year Changes Finalized Into Requirements - Passed to R/D | milestone | 0d | 2022-08-05 | 2022-08-05 | 29 | Lab Staff Engineers; UPC |
| 31 | Next Year Convert Requirements to Specifications |  | 41d | 2022-08-15 | 2022-10-10 | 13, 22, 30 | Lab Staff Engineers [50%] |
| 32 | Next Year Finalize Parts Selection for Development and Testing | milestone | 0d | 2022-10-11 | 2022-10-11 | 31 | Lab Staff Engineers; UPC |
| 33 | Next Year Development Phase |  | 40d | 2022-10-11 | 2022-12-06 | 22, 32 | Lab Staff Engineers [50%] |
| 34 | Next Year Lab , Homework, Documentation Documents Updated |  | 48d | 2022-10-11 | 2022-12-16 | 32 | Professors of Class Being Updated [50%] |

Notes:
- 1: UPC in collaboration with the teaching professors should discuss possible new hands-on activities such as labs and homeworks. These new activities will bring up new objectives that can not be met with existing lab solutions, or are too expensive or are too difficult for students and teaching staff. Discussions should be had with Lab Staff with respect to theoretical possibilities. / Discussion should also include input form student surveys. / Discussion should include input from the Board of Advisers.
- 2: The A-B break scheduled as the official proposal season for new changes. / Which class is to be updated follows a know cycle. / 5 years (or as many are available) of student outcomes with the previous version of the class should be addressed. / Advisory Board feedback is expected before proposing a new change. / Changes should take the form of lab objectives, and homework objectives.
- 3: During this period the proposed changes are discussed by the faculty and the issues sent back to UPC. Curriculum issues are highlighted and the petogogical objectives are evaluated.
- 4: Milestone: Finalize change request / With approval of the faculty, the changes proposed by UPC are passed off to Lab Design Engineers for R/D. / This unlocks some of the development funds to purchase and produce preliminary parts for evaluation. These parts may or may not make it to the lab test round. If they are not used, they will be availible to students through Odoo. / This represents new lab and homework objectives. This should be a complete list of the required objectives for hands on learning in the class. / This should take into account what skills can be assumed from previous classes. / This should tak into account what practical skills the class needs to provide to classes later in the series.
- 5: Take the Requirements and conver them into parts selection options. / Be prepared to discuss the discuss *multiple parts kit options* as specificitions that meet the Requirements.
- 6: Parts are selected for prototyping and testing phases. One set of hardware is selected to be purchased and produced. This set will be used to develop the updated lab and homework material. / This list is brought to the UPC for approval. This approval unlocks the rest of the development funds to develop the prototypes and test classes. / The formal list of objectives must be possible with the given solution. / The changes should represent improvements in possible technology access and aim for the highest possible technological capibility given time and money constraints. / Open Source/Open Hardware technology is prefered. / Custom engineering work done by WPI staff is always Open Source. / Technology chosen must not leak students private data.
- 7: In this phase the hardware kits for all hands-on activities should be fully built and tested by R/D staff. / Consideration should be given to how this kit interfaces with existing kits of hardware. / Tools for working with the hands-on activity are also tested. / Tool compatibility with Lab PC's must be verified. / This cycles budget comes from the previous years APBP.
- 8: Example lab procedures that meet objectives will be drafted during this phase. Collaboration between the lab staff and the professors that will be teaching this class is desirable. Lab R/D staff may draft procedures if professor attention is scarce. / This should take place between the end of D term and the start of E1
- 9: Any lecture slides for this class should be updated. The student workers will be using the slides as the source of material for performing the new labs. If the professor wishes to give test lectures the students will be available for that as well. This would also be the period that any new tutorial videos should be recorded. Any live lectures given to student workers can be recorded and used as the lectures for the A term ISP to lighten the load of the teaching professor.
- 10: Convert electrical prototypes from development phase into any applicible custom PCB's. / By the end of the is period a working PCB dessign should be finished and a set of hand populated working prototypes made availible for the E1 test class.
- 11: During E1 a test class with the new labs is run through. The students will have access to the new materials and have to complete the labs and homeworks. Any additional material needed will be highlighted by these student test. By running test classes with paid workers instead of paying students we ensure that no students grade or education outcome is influenced by the unknown-unknowns of the first drafts.
- 12: During E2 we will re-incorporate and restructure the class from E1. This restructured class will be run through by the same students again. This avoids any errors in the corrections or restructuring effecting student outcomes. / The second run through the labs produce a set of known-good solution examples to be provided to graders and SA's.
- 13: All Documents updated / Documents for new labs, homeworks and instructions are all updated, tested and ready for use with a test class. / This milestone triggers the bulk purchase of new components in second semester roll out. Production orders for new hardware placed now. New device production should be sent out to the in house production as much as possible.
- 14: An ISP is run for 3 students that will cross-count for the class that is being updated. / Students should have access to updated lecture slides and new tutorial videos. Recorded lectures from the summer session can be used and supplemented by live instruction as the professor sees fit.
- 15: Any changes in documentation or teaching materials are re-incorporated and finalized into the final version of the materials.
- 16: Milestone / Final version of lecture slides. / Final version of lab documents. / Final version of lab kit contents. / Export Canvas state. / Known good solutions are updated with the Experimental course solutions. / Kit of all this material is presented to UPC for archival and for use with by any future teaching professors.
- 18: The second semester version of the class in question will receive the full class update. / For 1001, 2001 and 3001 this means C term roll out. / For 2002 and 3002 that means a D term roll out.
- 19: This budgut must be fully spent in 11 months. / June has no budget spending during accounting resolution.
- 20: The plan for how we intend to spend any money spent next year has to be submitted here. / Expendatures that are not in this plan can not be spent. / This plan should include the development cycle, the summer student testing support, the cost of full scale roll out.
- 21: During this period no budget can be spent. This time is spent by accouting.
- 22: This budgut must be fully spent in 11 months. / June has no budget spending during accounting resolution.
- 23: An ISP is run for 3 students that will cross-count for the class that is being updated. / Students should have access to updated lecture slides and new tutorial videos. Recorded lectures from the summer session can be used and supplemented by live instruction as the professor sees fit.
- 24: Any changes in documentation or teaching materials are re-incorporated and finalized into the final version of the materials.
- 27: UPC in collaboration with the teaching professors should discuss possible new hands-on activities such as labs and homeworks. These new activities will bring up new objectives that can not be met with existing lab solutions, or are too expensive or are too difficult for students and teaching staff. Discussions should be had with Lab Staff with respect to theoretical possibilities. / Discussion should also include input form student surveys. / Discussion should include input from the Board of Advisers.
- 28: The A-B break scheduled as the official proposal season for new changes. / Which class is to be updated follows a know cycle. / 5 years (or as many are available) of student outcomes with the previous version of the class should be addressed. / Advisory Board feedback is expected before proposing a new change. / Changes should take the form of lab objectives, and homework objectives.
- 29: During this period the proposed changes are discussed by the faculty and the issues sent back to UPC. Curriculum issues are highlighted and the petogogical objectives are evaluated.
- 30: Milestone: Finalize change request / With approval of the faculty, the changes proposed by UPC are passed off to Lab Design Engineers for R/D. / This unlocks some of the development funds to purchase and produce preliminary parts for evaluation. These parts may or may not make it to the lab test round. If they are not used, they will be availible to students through Odoo. / This represents new lab and homework objectives. This should be a complete list of the required objectives for hands on learning in the class. / This should take into account what skills can be assumed from previous classes. / This should tak into account what practical skills the class needs to provide to classes later in the series.
- 31: Take the Requirements and conver them into parts selection options. / Be prepared to discuss the discuss *multiple parts kit options* as specificitions that meet the Requirements.
- 32: Parts are selected for prototyping and testing phases. One set of hardware is selected to be purchased and produced. This set will be used to develop the updated lab and homework material. / This list is brought to the UPC for approval. This approval unlocks the rest of the development funds to develop the prototypes and test classes. / The formal list of objectives must be possible with the given solution. / The changes should represent improvements in possible technology access and aim for the highest possible technological capibility given time and money constraints. / Open Source/Open Hardware technology is prefered. / Custom engineering work done by WPI staff is always Open Source. / Technology chosen must not leak students private data.
- 33: In this phase the hardware kits for all hands-on activities should be fully built and tested by R/D staff. / Consideration should be given to how this kit interfaces with existing kits of hardware. / Tools for working with the hands-on activity are also tested. / Tool compatibility with Lab PC's must be verified. / This cycles budget comes from the previous years APBP.
- 34: Example lab procedures that meet objectives will be drafted during this phase. Collaboration between the lab staff and the professors that will be teaching this class is desirable. Lab R/D staff may draft procedures if professor attention is scarce. / This should take place between the end of D term and the start of E1
